# Modèle QCM

Schedule from MS Project, 2015-10-06 to 2016-07-05, status date 2016-01-27, 2 hours a day, costs in €, A marks actual dates.
Martin3D

## Calendars

- Standard: Mon-Fri 18:00-19:00; Sat-Sun 15:00-17:00. Exceptions (off unless hours are given): 2015-10-06 to 2015-10-09 18:00-20:00 (Semaine cours 1, recurring), 2015-11-16 09:00-12:30, 13:30-17:00 (Journée projet 1), 2015-11-17 to 2015-11-20 18:00-20:00 (Semaine cours 2, recurring), 2015-11-18 09:00-12:30 (Journée projet 2), 2015-11-23 to 2015-11-27 18:00-20:00 (Semaine cours 3, recurring), 2015-11-30 to 2015-12-01 09:00-12:30, 13:30-17:00 (Journée projet 3), 2015-11-30 to 2015-12-04 18:00-20:00 (Semaine cours 4, recurring), 2015-12-04 09:00-12:30 (Journée projet 4), 2015-12-25 (Journée noël), 2016-01-11 to 2016-01-15 18:00-20:00 (Semaine cours 5), 2016-01-18 to 2016-01-22 18:00-20:00 (Semaine cours 6), 2016-01-25 to 2016-01-29 18:00-20:00 (Semaine cours 7, recurring), 2016-01-27 09:00-12:30, 13:30-17:00 (Journée projet 5), 2016-02-12 to 2016-02-15 (Week end Center Parc), 2016-03-07 to 2016-03-11 18:00-20:00 (Semaine cours 8, recurring), 2016-03-11 09:00-12:30 (Journée projet 6), 2016-03-14 to 2016-03-18 18:00-20:00 (Semaine cours 9), 2016-03-21 12:30-17:00 (Journée projet 7), 2016-03-21 to 2016-03-25 18:00-20:00 (Semaine cours 10, recurring), 2016-05-09 to 2016-05-13 18:00-20:00 (Semaine cours 11, recurring), 2016-05-11 09:00-12:30, 13:30-17:00 (Journée projet 8), 2016-05-16 to 2016-05-20 18:00-20:00 (Semaine cours 12, recurring), 2016-05-18 09:00-12:30, 13:30-17:00 (Journée projet 9), 2016-06-27 to 2016-07-01 18:00-20:00 (Semaine cours 13, recurring), 2016-06-29 09:00-12:30, 13:30-17:00 (Journée projet 10), 2016-07-01 09:00-12:30, 13:30-17:00 (Journée projet 11), 2016-07-04 to 2016-07-06 18:00-20:00 (Semaine cours 14).

## Resources

| Resource | Rate |
| --- | --- |
| Lepage Alexis | 68 |

## Schedule

| ID | WBS | Task | Type | Duration | Start | Finish | Predecessors | Complete | Remaining | Baseline start | Baseline finish | Baseline duration | Baseline 1 start | Baseline 1 finish | Total slack | Free slack | Resources | Work | Actual work | Cost | Actual cost |
| --- | --- | --- | --- | --- | --- | --- | --- | --- | --- | --- | --- | --- | --- | --- | --- | --- | --- | --- | --- | --- | --- |
| 1 | 1 | **1. Rédaction** |  | 53d | 2015-10-06 A | 2015-12-02 A |  | 100% |  | 2015-10-06 | 2015-11-30 | 48d | 2015-10-06 | 2015-12-02 |  |  |  | 106h | 106h | 7,208 | 7,208 |
| 2 | 1.1 | Début de projet | milestone | 0d | 2015-10-06 A | 2015-10-06 A |  | 100% |  |  |  |  | 2015-10-06 | 2015-10-06 |  |  | Lepage Alexis |  |  |  |  |
| 3 | 1.2 | 1.1 Rédaction du cahier des charges |  | 4d | 2015-10-06 A | 2015-10-09 A |  | 100% |  | 2015-10-06 | 2015-10-09 | 4d | 2015-10-06 | 2015-10-09 |  |  | Lepage Alexis | 8h | 8h | 544 | 544 |
| 4 | 1.3 | 1.2 Rédaction des spécifications générales |  | 9d | 2015-10-10 A | 2015-10-23 A | 3 | 100% |  | 2015-10-10 | 2015-10-23 | 9d | 2015-10-10 | 2015-10-23 |  |  | Lepage Alexis | 18h | 18h | 1,224 | 1,224 |
| 5 | 1.4 | Validation Cahier des charges fonctionnel | milestone | 0d | 2015-10-23 A | 2015-10-23 A | 4 | 100% |  |  |  |  | 2015-10-24 | 2015-10-24 |  |  | Lepage Alexis |  |  |  |  |
| 6 | 1.5 | 1.3 Rédaction des spécifications détaillées |  | 40d | 2015-10-24 A | 2015-12-02 A | 4 | 100% |  | 2015-10-24 | 2015-11-30 | 35d | 2015-10-24 | 2015-12-02 |  |  | Lepage Alexis | 80h | 80h | 5,440 | 5,440 |
| 7 | 1.6 | Validation Cahier des charges spécifique | milestone | 0d | 2015-12-02 A | 2015-12-02 A | 6 | 100% |  |  |  |  | 2015-12-02 | 2015-12-02 |  |  |  |  |  |  |  |
| 8 | 2 | **2. Développement** |  | 147d | 2015-12-02 A | 2016-06-04 |  | 82% | 27d | 2015-11-30 | 2016-05-22 | 144d | 2015-12-02 | 2016-06-04 | 29d |  |  | 294h | 240h | 19,992 | 16,320 |
| 9 | 2.1 | 2.1 Base de données |  | 2d | 2015-12-02 A | 2015-12-04 A | 6 | 100% |  | 2015-11-30 | 2015-12-01 | 2d | 2015-12-02 | 2015-12-04 |  |  | Lepage Alexis | 4h | 4h | 272 | 272 |
| 10 | 2.2 | 2.2 Web Service |  | 30d | 2015-12-04 A | 2016-01-15 A | 9 | 100% |  | 2015-12-01 | 2016-01-10 | 30d | 2015-12-04 | 2016-01-15 |  |  | Lepage Alexis | 60h | 60h | 4,080 | 4,080 |
| 11 | 2.3 | Validation Webservice et base de données | milestone | 0d | 2016-01-15 A | 2016-01-15 A | 10 | 100% |  |  |  |  | 2016-01-15 | 2016-01-15 |  |  | Lepage Alexis |  |  |  |  |
| 12 | 2.4 | 2.3 BackEnd Sonata |  | 7d | 2016-01-15 A | 2016-01-22 A | 10 | 100% |  | 2016-01-10 | 2016-01-17 | 7d | 2016-01-15 | 2016-01-22 |  |  | Lepage Alexis | 14h | 14h | 952 | 952 |
| 13 | 2.5 | Validation BackEnd | milestone | 0d | 2016-01-22 A | 2016-01-22 A | 12 | 100% |  |  |  |  | 2016-01-22 | 2016-01-22 |  |  | Lepage Alexis |  |  |  |  |
| 14 | 2.6 | 2.4 Application Android |  | 36d | 2016-01-22 A | 2016-03-11 A | 12 | 100% |  | 2016-01-17 | 2016-03-05 | 35d | 2016-01-22 | 2016-03-11 |  |  | Lepage Alexis | 72h | 72h | 4,896 | 4,896 |
| 15 | 2.7 | Validation application Android | milestone | 0d | 2016-03-11 A | 2016-03-11 A | 14 | 100% |  |  |  |  | 2016-03-11 | 2016-03-11 |  |  | Lepage Alexis |  |  |  |  |
| 16 | 2.8 | 2.5 Application IOS |  | 36d | 2016-03-11 A | 2016-04-24 | 14 | 25% | 27d | 2016-03-05 | 2016-04-13 | 35d | 2016-03-11 | 2016-04-24 | 65d | 0d | Lepage Alexis | 72h | 18h | 4,896 | 1,224 |
| 17 | 2.9 | Validation application IOS | milestone | 0d | 2016-04-24 | 2016-04-24 | 16 |  |  |  |  |  | 2016-04-24 | 2016-04-24 | 65d |  | Lepage Alexis |  |  |  |  |
| 18 | 2.10 | 2.6 Application Windows |  | 36d | 2016-04-24 A | 2016-06-04 A | 16 | 100% |  | 2016-04-14 | 2016-05-22 | 35d | 2016-04-24 | 2016-06-04 |  |  | Lepage Alexis | 72h | 72h | 4,896 | 4,896 |
| 19 | 2.11 | Validation application Windows | milestone | 0d | 2016-06-04 A | 2016-06-04 A | 18 | 100% |  |  |  |  | 2016-06-04 | 2016-06-04 |  |  | Lepage Alexis |  |  |  |  |
| 20 | 3 | **3. Validation et déploiement** |  | 29d | 2016-06-04 A | 2016-07-05 |  | 69% | 9d |  |  |  | 2015-11-08 | 2016-07-06 | 0d |  |  | 58h | 40h | 3,944 | 2,720 |
| 21 | 3.1 | 3.1 Environnement de test |  | 6d | 2016-06-04 | 2016-06-12 | 18 |  |  |  |  |  | 2016-06-04 | 2016-06-12 | 23d |  | Lepage Alexis | 12h |  | 816 |  |
| 22 | 3.2 | 3.2 Test des applications mobiles |  | 10d | 2016-06-13 A | 2016-06-27 A | 21 | 100% |  |  |  |  | 2016-06-13 | 2016-06-27 |  |  | Lepage Alexis | 20h | 20h | 1,360 | 1,360 |
| 23 | 3.3 | 3.3 Test BackEnd |  | 10d | 2016-06-28 A | 2016-07-02 A | 22 | 100% |  |  |  |  | 2016-06-28 | 2016-07-02 |  |  | Lepage Alexis | 20h | 20h | 1,360 | 1,360 |
| 24 | 3.4 | Validation des test | milestone | 0d | 2016-07-02 | 2016-07-02 | 23 |  |  |  |  |  | 2016-07-03 | 2016-07-03 | 3d |  | Lepage Alexis |  |  |  |  |
| 25 | 3.5 | 3.4 Environnement de production et déploiement |  | 3d | 2016-07-03 | 2016-07-05 | 23 |  |  |  |  |  | 2016-07-03 | 2016-07-05 | 0d |  | Lepage Alexis | 6h |  | 408 |  |
| 26 | 3.6 | Fin de projet | milestone | 0d | 2016-07-05 | 2016-07-05 | 25 |  |  |  |  |  |  |  | 0d |  | Lepage Alexis |  |  |  |  |
